# PotdarS

Schedule from Primavera P6, 2014-03-30 to 2014-11-29, data date 2014-06-01, A marks actual dates.
Must finish by 2014-12-12

## Calendars

- 7 Day work week No holidays: Mon-Sun 08:00-16:00.

## Schedule

| ID | WBS | Activity | Type | Duration | Start | Finish | Predecessors | Complete | Remaining | Planned start | Planned finish | Total float | Free float |
| --- | --- | --- | --- | --- | --- | --- | --- | --- | --- | --- | --- | --- | --- |
|  | -Lab 2.1 | **Milestones** |  |  | 2014-03-30 | 2014-11-29 |  |  |  |  |  |  |  |
| MOMS001 |  | Notice to proceed | milestone | 0d | 2014-03-30 A | 2014-03-30 A |  | 100% |  |  |  |  |  |
| MOMS040 |  | Milestone 4-Final Completion 1065 CCD After NTP (2/28/17) | milestone | 0d | 2014-11-29 | 2014-11-29 | ACE 1050, W4E-1140, W5E-1450, W5E-1451 |  |  |  |  | 12d | 0d |
|  | Lab 2.6 | **Submittals** |  |  | 2014-03-30 | 2014-07-20 |  |  |  |  |  |  |  |
| 01720S-1000 |  | Submit As-Built Survey of Tunnels / Caverns |  | 20d | 2014-03-30 A | 2014-04-25 A | MOMS001 | 100% |  | 2014-03-30 | 2014-04-18 |  |  |
| 03370S-1020 |  | Submit Structural Shotcrete Mix |  | 20d | 2014-03-30 A | 2014-04-18 A | MOMS001 | 100% |  |  |  |  |  |
| 03200A-1520 |  | Approve steel Reinf Details plans-East Assembly Chamber-Arch |  | 30d | 2014-04-05 A | 2014-07-01 | 03200S-1520 | 97% | 1d | 2014-04-05 | 2014-05-04 | 154d | 75d |
| 01720A-1000 |  | Approve as Built Survey of Tunnels/ Caverns |  | 30d | 2014-04-19 A | 2014-05-11 A | 01720S-1000 | 100% |  | 2014-04-19 | 2014-05-18 |  |  |
| 03200S-1140 |  | Submit Steel Reinf Detail plans- Structure 4 Wye East Invert Slab |  | 20d | 2014-06-01 | 2014-06-20 | MOMS001 |  |  |  |  | 12d | 0d |
| 03200S-1150 |  | Submit Steel Reinf Detail plans-Structure 4 wye east walls |  | 20d | 2014-06-01 | 2014-06-20 | MOMS001 |  |  |  |  | 24d | 0d |
| 03200S-1160 |  | Submit Stell Reinf Detail plans-Structure 4 wye-East Arch |  | 20d | 2014-06-01 | 2014-06-20 | MOMS001 |  |  |  |  | 33d | 0d |
| 03200S-1210 |  | Submit Steel Reinf Detail plans-Tunnel EB2 Invert |  | 20d | 2014-06-01 | 2014-06-20 | MOMS001 |  |  |  |  | 112d | 0d |
| 03200S-1220 |  | Submit Steel Reinf Detail plans-tunne; EB2 Arch |  | 20d | 2014-06-01 | 2014-06-20 | MOMS001 |  |  |  |  | 51d | 0d |
| 03200S-1420 |  | Submit Steel Reinf Detail plans -Structure 5 wye East Walls |  | 20d | 2014-06-01 | 2014-06-20 | MOMS001 |  |  |  |  | 30d | 0d |
| 03200S-1430 |  | New AcSubmit Steel Reinf Detail Plans-Structure 5 wye East Arch |  | 20d | 2014-06-01 | 2014-06-20 | MOMS001, MOMS001 SS |  |  |  |  | 44d | 0d |
| 03200S-1520 |  | Submit Steel Reinf Detail Plans-East Assembly Chamber Arch |  | 30d | 2014-06-01 | 2014-06-30 | MOMS001 |  |  |  |  | 154d | 0d |
| 03200S-2080 |  | Submit Steel Reinf Detail Plans- Electric Duct banks |  | 20d | 2014-06-01 | 2014-06-20 | MOMS001 |  |  |  |  | 97d | 0d |
| 03370A-1020 |  | Approve Structural Shotcrete mix |  | 30d | 2014-06-01 | 2014-06-30 | 03370S-1020 |  |  |  |  | 59d | 36d |
| 07122S-1300 |  | Submit Waterproofing shop drawings-Tunnel EB2 |  | 1d | 2014-06-01 | 2014-06-01 | MOMS001, MOMS001 SS |  |  |  |  | 36d | 0d |
| 07122S-1360 |  | Submit Waterproofing Shop Drawings -Structure 4 East wye |  | 1d | 2014-06-01 | 2014-06-01 | MOMS001, MOMS001 SS |  |  |  |  | 24d | 0d |
| 07122S-1430 |  | Submit waterproofing shop drawings structure 5 east wye |  | 1d | 2014-06-01 | 2014-06-01 | MOMS001 |  |  |  |  | 41d | 0d |
| 07122A-1300 |  | Approve Waterproofing shop drawings- Tunnel EB2 |  | 30d | 2014-06-02 | 2014-07-01 | 07122S-1300 |  |  |  |  | 36d | 0d |
| 07122A-1360 |  | Approve Waterproofing Shop Drawings- Structural 4 East Wye |  | 30d | 2014-06-02 | 2014-07-01 | 07122S-1360 |  |  |  |  | 24d | 0d |
| 07122A-1430 |  | Approve waterproofing shop drwaings - Structure 5 East wye |  | 30d | 2014-06-02 | 2014-07-01 | 07122S-1430 |  |  |  |  | 41d | 5d |
| 03200A-1140 |  | Approve Steel Reinf Detail Plans- Structure 4 Wye East Invert Slab |  | 30d | 2014-06-21 | 2014-07-20 | 03200S-1140 |  |  |  |  | 12d | 0d |
| 03200A-1150 |  | Approve Steel Reinf Detail plans- Structure 4 wye East Wall |  | 30d | 2014-06-21 | 2014-07-20 | 03200S-1150 |  |  |  |  | 24d | 12d |
| 03200A-1160 |  | Approve Steel Reinf Detail plans- Structure 4 wye East arch |  | 30d | 2014-06-21 | 2014-07-20 | 03200S-1160 |  |  |  |  | 33d | 21d |
| 03200A-1210 |  | Approve steel Reinf Detail plans- Tunnel EB2 Invert |  | 30d | 2014-06-21 | 2014-07-20 | 03200S-1210 |  |  |  |  | 112d | 0d |
| 03200A-1220 |  | Approve Steel Reiinf Detail plans-Tunnel EB2 Arch |  | 30d | 2014-06-21 | 2014-07-20 | 03200S-1220 |  |  |  |  | 51d | 38d |
| 03200A-1420 |  | Approve Steel Reinf Detail Plans-Structure 5 wye East Walls |  | 30d | 2014-06-21 | 2014-07-20 | 03200S-1420 |  |  |  |  | 30d | 0d |
| 03200A-1430 |  | Approve steel Reinf Detail Plans-Structure 5 Wye Easr Arch |  | 30d | 2014-06-21 | 2014-07-20 | 03200S-1430 |  |  |  |  | 44d | 14d |
| 03200A-2080 |  | Approve steel Reinf Detail plans-Electric Ductbanks |  | 30d | 2014-06-21 | 2014-07-20 | 03200S-2080 |  |  |  |  | 97d | 45d |

| ID | WBS | Activity | Duration | Start | Finish | Predecessors | Total float | Free float |
| --- | --- | --- | --- | --- | --- | --- | --- | --- |
|  | Lab 2.2 | **East Assembly Chamber** |  | 2014-06-07 | 2014-11-29 |  |  |  |
| ACE 1000 |  | Form and Pour Overbreak Concr-East Assemb Chamb | 2d | 2014-06-07 | 2014-06-08 | 01720A-1000, W5E-1240 | 72d | 0d |
| ACE 1010 |  | Smoothing Shotcrete East Assemb Chamb | 1d | 2014-06-09 | 2014-06-09 | ACE 1000 | 174d | 55d |
| ACE 1020 |  | Waterproof arch-east assembly chamber | 2d | 2014-08-04 | 2014-08-05 | ACE 1010, TEB24-1000 | 119d | 40d |
| ACE 1030 |  | Install arch rebar-east assembly chamber | 5d | 2014-09-15 | 2014-09-19 | 03200A-1520, ACE 1020, TEB24-1010 | 79d | 18d |
| ACE 1040 |  | Pour arch east assembly chamber | 2d | 2014-10-08 | 2014-10-09 | ACE 1030, TEB23-1020, TEB24-1020 | 61d | 49d |
| ACE 1051 |  | Conduit for ductbank east assembly chamber | 1d | 2014-11-28 | 2014-11-28 | ACE 1040, TEB24-1030 | 12d | 0d |
| ACE 1050 |  | Duct bank East assembly chambert | 1d | 2014-11-29 | 2014-11-29 | ACE 1051 | 12d | 0d |
|  | Lab 2.3 | **Tunnel East Board** |  | 2014-06-01 | 2014-11-27 |  |  |  |
| TEB21-1040 |  | Pour Arch-Tunnel EB2-Structure 4 Crossover to GCT 4 Wye East | 1d | 2014-06-01 | 2014-06-01 |  | 144d | 132d |
| TEB21-1000 |  | Waterproof Invert and Arch-Tunnel EB2-Slructure 4 Wye East to GCT 4 Crossover | 1d | 2014-07-02 | 2014-07-02 | 07122A-1300 | 36d | 0d |
| TEB21-1015 |  | Install Track Drains and Manholes-Tunnel EB2-Structure 4 Crossover to GCT 4 Wye East | 1d | 2014-07-03 | 2014-07-03 | TEB21-1000 | 154d | 18d |
| TEB22-1000 |  | Waterproof Invert and Arch-Tunnel EB2-55th St. Ventilation Facility to GCT 4 Crossover | 2d | 2014-07-03 | 2014-07-04 | 07122A-1300, TEB21-1000 | 36d | 0d |
| TEB23-1000 |  | Waterproof Invert and Arch-Tunnel EB2-Slructure 5 Wye East to 55th St. Ventilation Facility | 2d | 2014-07-05 | 2014-07-06 | 07122A-1300, TEB22-1000 | 36d | 0d |
| TEB24-1000 |  | Waterproof Arch-Tunnel EB2-Assembly Chamber East to GCT 5 Wye East | 20d | 2014-07-15 | 2014-08-03 | 07122A-1300, TEB23-1000, W5E-1250 | 119d | 0d |
| TEB21-1010 |  | Install Invert Rebar-Tunnel EB2-Structure4 Crossover toGCT 4 Wye East | 1d | 2014-07-21 | 2014-07-21 | 03200A-1210, TEB21-1000 | 112d | 0d |
| TEB21-1020 |  | Pour Invert-T um-el EB2-Str ucture 4 Crossover to GCT 4 Wye East | 1d | 2014-07-22 | 2014-07-22 | TEB21-1010, TEB21-1015 | 136d | 0d |
| TEB22-1010 |  | Install Invert Rebar-Tunnel EB2-55th St Ventilation Facility to GCT 4 Cross over | 1d | 2014-07-22 | 2014-07-22 | 03200A-1210, TEB21-1010, TEB22-1000 | 112d | 0d |
| TEB22-1015 |  | Install Track Drains and Manholes-Tunnel EB2-55th St. Ventilation Facility to GCT 4 Crossover | 1d | 2014-07-22 | 2014-07-22 | TEB21-1010 | 112d | 0d |
| TEB22-1020 |  | Pour Invert-Tunnel EB2-55th St. Ventilation Facility to GCT 4 Crossover | 1d | 2014-07-23 | 2014-07-23 | TEB21-1020, TEB22-1010, TEB22-1015 | 136d | 0d |
| TEB23-1010 |  | Install Invert Rebar-Tunnel EB2-Structure 5 Wye East to 55th St. Ventilation Facility | 1d | 2014-07-23 | 2014-07-23 | 03200A-1210, TEB22-1010, TEB22-1015, TEB23-1000 | 112d | 0d |
| TEB23-1015 |  | Install Track Drains and Manholes-Tunnel EB2-Structure 5 Wye East to 55th St. Ventilation Fac ility | 1d | 2014-07-23 | 2014-07-23 | TEB22-1010, TEB22-1015, TEB23-1000 | 137d | 1d |
| TEB23-1020 |  | Pour Invert-Tunnel EB2-S1ructure 5 Wye Ea st to 55th St. Ventilation Facility | 1d | 2014-07-24 | 2014-07-24 | TEB22-1020, TEB23-1010, TEB23-1015 FF | 136d | 75d |
| TEB21-1030 |  | lnstallArch Rebar-Tunnel EB2-Structure 4 Crossover to GCT 4 Wye East | 2d | 2014-08-26 | 2014-08-27 | W4E-1080 | 51d | 0d |
| TEB23-1030 |  | Install Arch Rebar-Tunnel EB2-Structure 5 Wye East to 55th St. Vential tion Facility | 2d | 2014-08-28 | 2014-08-29 | 03200A-1220, TEB21-1030 | 51d | 0d |
| TEB24-1010 |  | Install Arch Rebar-Tunnel EB2-Assembly Chamber East to GCT 5 Wye East | 17d | 2014-08-29 | 2014-09-14 | 03200A-1220, W5E-1290 | 12d | 0d |
| TEB22-1030 |  | lnstallArch Rebar-Tunnel EB2-55th St. Ventilation Facility to GCT 4 Crossover | 2d | 2014-08-30 | 2014-08-31 | 03200A-1220, TEB23-1030 | 51d | 39d |
| TEB24-1020 |  | Pour Arch-Tunnel EB2-Assembly Chamber East to GCT 5 Wye East | 23d | 2014-09-15 | 2014-10-07 | TEB24-1010, W5E-1300 | 12d | 0d |
| TEB23-1040 |  | Pour Arch-Tunnel EB2-Structure 5 Wye East to 55th St. Ventilation Facility | 2d | 2014-10-08 | 2014-10-09 | TEB23-1030, TEB24-1020 | 12d | 0d |
| TEB24-1031 |  | Conduit for Ductbank-Tunnel EB2 G CT 5 Wye East to Assembly Chamber East | 12d | 2014-10-08 | 2014-10-19 | TEB24-1020 | 39d | 27d |
| TEB22-1040 |  | Pour Arch-Tunnel EB2-55th St. Ventilation Facility to GCT 4 Crossove r | 2d | 2014-10-10 | 2014-10-11 | TEB21-1030, TEB22-1030, TEB23-1040 | 12d | 0d |
| TEB21-1051 |  | Conduit for Ductbank-Tunnel EB2-Structu re 4 Wye East to GCT 4 Crossover | 1d | 2014-10-12 | 2014-10-12 | TEB22-1040, W4E-1120 | 16d | 0d |
| TEB22-1051 |  | Conduit for Ductbank-Tunnel EB2-Slructure 4 Crossover to 55th St. Ventilation Facility | 6d | 2014-10-12 | 2014-10-17 | TEB21-1040, TEB22-1040 | 12d | 0d |
| TEB21-1050 |  | Ductbank-TumelEB2-Structure 4 Wye East to GCT 4 Crossover | 1d | 2014-10-13 | 2014-10-13 | TEB21-1051, W4E-1110, W4E-1120, W4E-1121 | 16d | 4d |
| TEB22-1050 |  | Ductbank-Tumel EB2-Structure 4 Crossover to 55th St. Ventilation Facility | 6d | 2014-10-18 | 2014-10-23 | TEB21-1050, TEB21-1051, TEB22-1051 | 12d | 0d |
| TEB23-1051 |  | Conduit for Ductbank-Tunnel EB2-55th St. Ventilation Facility to GCT 5 Wye East | 8d | 2014-10-24 | 2014-10-31 | TEB22-1050 | 12d | 0d |
| TEB23-1050 |  | Ducibank-TumelEB2-55th St. Ventilation Facility to GCT 5 Wye East | 8d | 2014-11-01 | 2014-11-08 | TEB22-1050, TEB22-1051, TEB23-1010, TEB23-1040, TEB23-1051 | 12d | 0d |
| TEB24-1030 |  | Ductbank-TumelEB2 GCT 5 Wye East to Assembly Chamber East | 12d | 2014-11-16 | 2014-11-27 | TEB24-1031, W5E-1330 | 12d | 0d |

| ID | WBS | Activity | Duration | Start | Finish | Predecessors | Remaining | Planned start | Planned finish | Total float | Free float |
| --- | --- | --- | --- | --- | --- | --- | --- | --- | --- | --- | --- |
|  | Lab 2.4 | **Structure 4 East wye** |  | 2014-05-23 | 2014-09-06 |  |  |  |  |  |  |
| W4E-1020 |  | Waterproof-S1ructure 4 East Wye | 7d | 2014-05-23 A | 2014-07-08 | 07122A-1360, W4E-1010 | 7d | 2014-05-23 | 2014-05-29 | 24d | 0d |
| W4E-1000 |  | Smoothing and Backfill Shotcrete-Structure 4 East Wye | 3d | 2014-06-01 | 2014-06-03 | 01720A-1000 |  |  |  | 51d | 0d |
| W4E-1010 |  | Install Porous Concrete and Perforated Drain Pipe-Structure 4 East Wye | 1d | 2014-06-04 | 2014-06-04 | W4E-1000 |  |  |  | 51d | 27d |
| W4E-1035 |  | Install Track Drains and Manholes-Structure 4 East Wye | 12d | 2014-07-09 | 2014-07-20 | W4E-1020 |  |  |  | 24d | 12d |
| W4E-1037 |  | Install Drain Pipe and Fittings-Base Slab-Structure 4 East Wye | 12d | 2014-07-09 | 2014-07-20 | W4E-1020 |  |  |  | 24d | 12d |
| W4E-1039 |  | Install Conduit-Base Slab-Structure 4 East Wye | 12d | 2014-07-09 | 2014-07-20 | W4E-1020 |  |  |  | 24d | 12d |
| W4E-1030 |  | Base Slab-Structure 4 East Wye | 12d | 2014-07-21 | 2014-08-01 | 03200A-1140, W4E-1020 |  |  |  | 12d | 0d |
| W4E-1040 |  | Walls to Siringine Structure 4 East Wye | 9d | 2014-08-02 | 2014-08-10 | 03200A-1150, W4E-1030, W4E-1035, W4E-1037, W4E-1039 |  |  |  | 12d | 0d |
| W4E-1045 |  | Install Drain Pipe and Fittings-Walls to Springlhe Structure 4 East Wye | 9d | 2014-08-02 | 2014-08-10 | W4E-1030, W4E-1035, W4E-1037, W4E-1039 |  |  |  | 12d | 0d |
| W4E-1060 |  | Install Arch Mesh Outer Layer-Structure 4 East Wye | 6d | 2014-08-11 | 2014-08-16 | 03200A-1160, W4E-1040, W4E-1045 |  |  |  | 12d | 0d |
| W4E-1070 |  | ShotcreteArch to Inner Layer-Structure 4 East Wye | 3d | 2014-08-17 | 2014-08-19 | 03370A-1020, W4E-1060 |  |  |  | 12d | 0d |
| W4E-1080 |  | Install Arch Mesh Inner Layer-Structure 4 East Wye | 6d | 2014-08-20 | 2014-08-25 | 03200A-1160, W4E-1070 |  |  |  | 12d | 0d |
| W4E-1090 |  | Shotcrete Arch to Finish-Structure 4 East Wye | 2d | 2014-08-26 | 2014-08-27 | 03370A-1020, W4E-1080 |  |  |  | 29d | 0d |
| W4E-1100 |  | Center Wal-Structure 4 East Wye | 6d | 2014-08-28 | 2014-09-02 | W4E-1090 |  |  |  | 52d | 0d |
| W4E-1111 |  | Conduit for Ductbank Center Wall- Struchre 4 East Wye | 1d | 2014-09-03 | 2014-09-03 | W4E-1100 |  |  |  | 52d | 0d |
| W4E-1121 |  | onduit for Ductbank Outer Wall- Structure 4 East Wye | 2d | 2014-09-03 | 2014-09-04 | W4E-1100 |  |  |  | 53d | 1d |
| W4E-1130 |  | Doors and Hardware-Structure 4 East Wye | 1d | 2014-09-03 | 2014-09-03 | W4E-1100 |  |  |  | 98d | 0d |
| W4E-1131 |  | Interior Signs-Structure 4 East Wye | 1d | 2014-09-03 | 2014-09-03 | W4E-1100 |  |  |  | 98d | 0d |
| W4E-1120 |  | Ductbank Outer Wall- Structure 4 East Wye | 2d | 2014-09-04 | 2014-09-05 | 03200A-2080, W4E-1100, W4E-1111 |  |  |  | 52d | 0d |
| W4E-1140 |  | Guardrail-Structure 4 East Wye | 1d | 2014-09-04 | 2014-09-04 | W4E-1130, W4E-1131 |  |  |  | 98d | 86d |
| W4E-1110 |  | Ductbank Center Wall- Structu-e 4 East Wye | 1d | 2014-09-06 | 2014-09-06 | 03200A-1150, 03200A-2080, W4E-1120, W4E-1121 |  |  |  | 52d | 36d |
|  | Lab 2.5 | **Structure 5 East wye** |  | 2014-06-04 | 2014-11-15 |  |  |  |  |  |  |
| W5E-1240 |  | Smoothing and Backfill Shotcrete-Structure 5 East Wye | 3d | 2014-06-04 | 2014-06-06 | 01720A-1000, W4E-1000 |  |  |  | 66d | 0d |
| W5E-1250 |  | Waterproof-S1ructure 5 East Wye | 8d | 2014-07-07 | 2014-07-14 | 07122A-1430, TEB23-1000, W5E-1240 |  |  |  | 36d | 0d |
| W5E-1265 |  | Install Drain Pipe and Fittings-Walls to Springlhe-Structure 5 East Wye | 14d | 2014-07-15 | 2014-07-28 | ACE 1000, W5E-1250 |  |  |  | 36d | 6d |
| W5E-1260 |  | Walls to Srringine-Structu-e 5 East Wye | 14d | 2014-07-21 | 2014-08-03 | 03200A-1420, ACE 1000, W5E-1250 |  |  |  | 30d | 0d |
| W5E-1270 |  | Install Arch Mesh Outer Layer-Structure 5 East Wye | 2d | 2014-08-04 | 2014-08-05 | 03200A-1430, W5E-1260, W5E-1265 |  |  |  | 30d | 0d |
| W5E-1280 |  | Shotcrete Arch to Inner Layer-Structure 5 East Wye | 2d | 2014-08-06 | 2014-08-07 | 03370A-1020, W5E-1270 |  |  |  | 30d | 18d |
| W5E-1290 |  | Install Arch Mesh Inner Layer-Structure 5 East Wye | 3d | 2014-08-26 | 2014-08-28 | 03200A-1430, W4E-1080, W5E-1280 |  |  |  | 12d | 0d |
| W5E-1300 |  | ShotcreteArch to Finish-Structure 5 East Wye | 1d | 2014-08-29 | 2014-08-29 | 03370A-1020, W4E-1090, W5E-1290 |  |  |  | 28d | 16d |
| W5E-1310 |  | Center Wal-Structure 5 East Wye | 3d | 2014-09-03 | 2014-09-05 | 03200A-1420, W4E-1100 |  |  |  | 74d | 0d |
| W5E-1220 |  | End Wal-Structure 5 East Wye Transformer Niche | 1d | 2014-09-06 | 2014-09-06 | W5E-1310 |  |  |  | 74d | 55d |
| W5E-1450 |  | Doors and Hardware-Structure 5 East Wye | 1d | 2014-09-06 | 2014-09-06 | W5E-1310 |  |  |  | 96d | 84d |
| W5E-1451 |  | Interior Signs-Structure 5 East Wye | 1d | 2014-09-06 | 2014-09-06 | W5E-1310 |  |  |  | 96d | 84d |
| W5E-1321 |  | Conduit for Ductbank Center Wall-Structure 5 East Wye (Two Crews) | 1d | 2014-11-01 | 2014-11-01 | TEB23-1051, W5E-1220 |  |  |  | 19d | 7d |
| W5E-1331 |  | Conduit for Ductbank Outer Wall-Structure 5 East Wye | 6d | 2014-11-01 | 2014-11-06 | TEB23-1051 |  |  |  | 15d | 3d |
| W5E-1320 |  | Ductbank Center Wall-Structu-e 5 East Wye (Two Crews) | 1d | 2014-11-09 | 2014-11-09 | TEB23-1050, W5E-1220, W5E-1321 |  |  |  | 12d | 0d |
| W5E-1330 |  | Ductbank Outer Wall-Structure 5 East Wye | 6d | 2014-11-10 | 2014-11-15 | TEB23-1050, W5E-1320, W5E-1331 |  |  |  | 12d | 0d |
